# سیمرغ

Schedule from MS Project XML, 2023-09-23 to 2024-10-23, status date 2024-11-17, 10 hours a day, A marks actual dates.

## Calendars

- استاندارد: Mon-Fri 08:00-12:00, 13:00-17:00; Sat-Sun off. Exceptions (off unless hours are given): 2024-03-19 (روز ملی شدن صنعت نفت, recurring), 2024-03-20 to 2024-03-31 (نوروز), 2024-03-31 to 2024-04-01 (روز جمهوری اسلامی ایران, recurring), 2024-04-01 (روز طبیعت), 2024-04-10 to 2024-04-11 (عید سعید فطر), 2024-05-04 (شهادت امام جعفر صادق (علیه السلام)), 2024-06-03 (رحلت حضرت امام خمینی, recurring), 2024-06-04 (قیام خونین 15 خرداد, recurring), 2024-06-17 (عید سعید قربان), 2024-06-25 (عید سعید غدیر خم), 2024-07-15 (تاسوعای حسینی), 2024-07-16 (عاشورای حسینی), 2024-07-27 to 2024-08-01 (تعطیلات سالانه کروز), 2024-08-25 (اربعین حسینی), 2024-09-02 (رحلت حضرت رسول اكرم (صلی الله علیه و آله)، شهادت حضرت امام حسن مجتبی (علیه السلام)), 2024-09-04 (شهادت امام رضا (علیه السلام)), 2024-09-12 (شهادت امام حسن عسکری(ع)), 2024-09-21 (ولادت حضرت رسول اكرم (صلی الله علیه و آله)).

## Schedule

| ID | WBS | Task | Type | Duration | Start | Finish | Predecessors | Complete | Baseline start | Baseline finish | Baseline duration | Constraint | شروع | پایان | Duration10 | Number10 | Number15 | Number18 | Number19 | Number20 | مسئول اجرا | وضعیت |
| --- | --- | --- | --- | --- | --- | --- | --- | --- | --- | --- | --- | --- | --- | --- | --- | --- | --- | --- | --- | --- | --- | --- |
| 1 | 1 | **آموزش و اجرای سیستم مدیریت عملکرد** |  | 283d | 2023-09-23 A | 2024-10-23 A |  | 100% | 2023-09-23 | 2024-10-23 | 283d |  | 1402/7/1 | 1403/8/2 | 244.2d | 100.06 | 96.42 | 9647.36 | 10006 | 100 |  |  |
| 2 | 1.1 | شروع پروژه | milestone | 0d | 2023-09-23 A | 2023-09-23 A |  | 100% | 2023-09-23 | 2023-09-23 | 0d | start no earlier than 2023-09-23 | 1402/7/1 | 1402/7/1 |  |  | 100 |  |  | 100 | مدیر پروژه |  |
| 3 | 1.2 | **فعالیت های نرم افزاری(پایان یافته است)** |  | 36.9d | 2023-11-05 A | 2023-12-20 A | 2 | 100% | 2023-11-05 | 2023-12-20 | 36.9d |  | 1402/8/14 | 1402/9/29 | 24d | 9.83 | 100 | 983 | 983 | 100 |  |  |
| 4 | 1.2.1 | رفع مشکلات اپ |  | 24d | 2023-11-05 A | 2023-12-20 A |  | 100% | 2023-11-05 | 2023-12-20 | 24d | finish no earlier than 2023-12-21 | 1402/8/14 | 1402/9/29 | 24d | 9.83 | 100 | 983 | 983 | 100 |  |  |
| 5 | 1.3 | **تامین نیازمندی های رویداد** |  | 20.4d | 2023-10-28 A | 2023-11-21 A |  | 100% | 2023-10-28 | 2023-11-21 | 20.4d |  | 1402/8/6 | 1402/8/30 | 35.2d | 14.44 | 100 | 1444 | 1444 | 100 |  |  |
| 6 | 1.3.1 | درخواست خرید لوازم رویداد به خرید داخلی |  | 2.4d | 2023-10-28 A | 2023-10-31 A |  | 100% | 2023-10-28 | 2023-10-31 | 2.4d |  | 1402/8/6 | 1402/8/9 | 1ed? | 0.98 | 100 | 98 | 98 | 100 | خرید داخلی |  |
| 7 | 1.3.2 | خرید لوازم رویداد توسط خرید داخلی |  | 11.2d | 2023-10-31 A | 2023-11-21 A | 6 | 100% | 2023-10-31 | 2023-11-21 | 11.2d |  | 1402/8/9 | 1402/8/30 | 11.2d | 4.59 | 100 | 459 | 459 | 100 | خرید داخلی |  |
| 8 | 1.3.3 | هماهنگی رزرو نمایشگاه و پذیرایی از مسئول دفتر مدیر عامل |  | 1.6d | 2023-10-31 A | 2023-11-04 A | 6 | 100% | 2023-10-31 | 2023-11-04 | 1.6d |  | 1402/8/9 | 1402/8/13 | 1.6d | 0.66 | 100 | 66 | 66 | 100 | امور رفاه | خانم بیات و تیم اموزش |
| 9 | 1.3.4 | درخواست تولید محتوا از واحد تولید محتوا |  | 1.6d | 2023-10-31 A | 2023-11-04 A | 6 | 100% | 2023-10-31 | 2023-11-04 | 1.6d |  | 1402/8/9 | 1402/8/13 | 1.6d | 0.66 | 100 | 66 | 66 | 100 | تولید محتوا |  |
| 10 | 1.3.5 | نصب بنر و استند در محل رویداد توسط واحد تولید محتوا |  | 1.6d | 2023-10-31 A | 2023-11-04 A | 6 | 100% | 2023-10-31 | 2023-11-04 | 1.6d |  | 1402/8/9 | 1402/8/13 | 1.6d | 0.66 | 100 | 66 | 66 | 100 | تولید محتوا | تولید محتوا |
| 11 | 1.3.6 | هماهنگی با شرکت سیمرغ جهت ارائه مطالب در رویداد |  | 8d | 2023-10-31 A | 2023-11-15 A | 6 | 100% | 2023-10-31 | 2023-11-15 | 8d |  | 1402/8/9 | 1402/8/24 | 8d | 3.28 | 100 | 328 | 328 | 100 | شرکت سیمرغ |  |
| 12 | 1.3.7 | ارائه مستندات مربوط به محتوای رویداد به تولید محتوا |  | 8d | 2023-10-31 A | 2023-11-15 A | 6 | 100% | 2023-10-31 | 2023-11-15 | 8d |  | 1402/8/9 | 1402/8/24 | 8d | 3.28 | 100 | 328 | 328 | 100 | تولید محتوا |  |
| 13 | 1.3.8 | هماهنگی پذیرایی از مدعوین رویداد توسط مسئول دفتر مدیرعامل |  | 0.8d | 2023-10-31 A | 2023-11-01 A | 6 | 100% | 2023-10-31 | 2023-11-01 | 0.8d |  | 1402/8/9 | 1402/8/10 | 0.8d | 0.33 | 100 | 33 | 33 | 100 | امور رفاه | ضبیحی |
| 14 | 1.4 | برگزاری رویداد | milestone | 0d | 2023-11-21 A | 2023-11-21 A | 6, 7, 8, 9, 10, 11, 12, 13 | 100% | 2023-11-21 | 2023-11-21 | 0d |  | 1402/8/30 | 1402/8/30 |  |  | 100 |  |  | 100 |  |  |
| 15 | 1.5 | **به روزرسانی و صحت سنجی اطلاعات نرم افزار** |  | 4.9d | 2023-11-22 A | 2023-11-28 A |  | 100% | 2023-11-22 | 2023-11-28 | 4.9d |  | 1402/9/1 | 1402/9/7 | 3.2d | 1.31 | 100 | 131 | 131 | 100 |  |  |
| 16 | 1.5.1 | بررسی اطلاعات کاربران |  | 3.2d | 2023-11-22 A | 2023-11-28 A | 14 | 100% | 2023-11-22 | 2023-11-28 | 3.2d |  | 1402/9/1 | 1402/9/7 | 3.2d | 1.31 | 100 | 131 | 131 | 100 | واحد توسعه |  |
| 17 | 1.6 | **هم راستایی مدیران** |  | 11.9d | 2023-11-28 A | 2023-12-13 A |  | 100% | 2023-11-28 | 2023-12-13 | 11.9d |  | 1402/9/7 | 1402/9/22 | 8d | 3.28 | 100 | 328 | 328 | 100 |  |  |
| 18 | 1.6.1 | ارائه نحوه منتورینگ واحد توسعه در کنار مدیران |  | 8d | 2023-11-28 A | 2023-12-13 A | 16 | 100% | 2023-11-28 | 2023-12-13 | 8d |  | 1402/9/7 | 1402/9/22 | 8d | 3.28 | 100 | 328 | 328 | 100 | واحد توسعه |  |
| 19 | 1.7 | **تعیین انتظارات** |  | 114d | 2023-12-20 A | 2024-06-01 A |  | 100% | 2023-12-20 | 2024-06-01 | 114d |  | 1402/9/29 | 1403/3/12 | 87d | 35.63 | 99.14 | 3532.36 | 3563 | 100 |  |  |
| 20 | 1.7.1 | ارسال ایمیل رسمی به تمام ارزیابی شوندگان و ارزیابی کنندگان جهت شروع فرآیند |  | 22.4d | 2023-12-20 A | 2024-02-03 A |  | 100% | 2023-12-20 | 2024-02-03 | 22.4d | finish no earlier than 2024-02-03 | 1402/9/29 | 1402/11/14 | 22.4d | 9.17 | 100 | 917 | 917 | 100 | واحد توسعه |  |
| 21 | 1.7.2 | پایش انجام صحیح و به موقع ورود اطلاعات |  | 37.4d | 2024-01-01 A | 2024-03-17 A | 20SS+5.6d | 100% | 2024-01-01 | 2024-03-17 | 37.4d |  | 1402/10/11 | 1402/12/27 | 37.4d | 15.32 | 98 | 1501.36 | 1532 | 100 | واحد توسعه |  |
| 22 | 1.7.3 | ارسال نظرسنجی برگزاری جلسات هدفگذاری به تمام ارزیابی شوندگان |  | 5.6d | 2024-04-08 A | 2024-04-17 A |  | 100% | 2024-04-08 | 2024-04-17 | 5.6d | start no earlier than 2024-04-08 | 1403/1/20 | 1403/1/29 | 5.6d | 2.29 | 100 | 229 | 229 | 100 | واحد توسعه |  |
| 23 | 1.7.4 | ارائه گزارش و بررسی عدم ویا کیفیت پایین تعیین اهداف براساس نظرسنجی |  | 5.6d | 2024-04-17 A | 2024-04-29 A | 22 | 100% | 2024-04-17 | 2024-04-29 | 5.6d |  | 1403/1/29 | 1403/2/10 | 5.6d | 2.29 | 100 | 229 | 229 | 100 | واحد توسعه |  |
| 24 | 1.7.5 | برگزاری جلسه با تمامی واحد های بدون ثبت اطلاعات و دارای درخواست |  | 8d | 2024-04-29 A | 2024-05-15 A | 23 | 100% | 2024-04-29 | 2024-05-15 | 8d |  | 1403/2/10 | 1403/2/26 | 8d | 3.28 | 100 | 328 | 328 | 100 | واحد توسعه |  |
| 25 | 1.7.6 | تهیه گزارش کلی از تعیین انتظارات در تمامی واحد های مشارکت کننده در فرآیند مدیریت عملکرد |  | 8d | 2024-05-15 A | 2024-06-01 A | 24 | 100% | 2024-05-15 | 2024-06-01 | 8d |  | 1403/2/26 | 1403/3/12 | 8d | 3.28 | 100 | 328 | 328 | 100 | واحد توسعه |  |
| 26 | 1.8 | اتمام تعیین انتظارات معاونین و مدیران و روسا و کارشناسان مسیول | milestone | 0d | 2024-06-01 A | 2024-06-01 A | 20, 21, 22, 23, 24, 25 | 100% | 2024-06-01 | 2024-06-01 | 0d |  | 1403/3/12 | 1403/3/12 |  |  | 100 |  |  | 100 |  |  |

Notes:
- 4: Text6: از اقای فرهاد صادقی پیگیری شود.
- 21: Text6: 75 جلسه داریم 3 روز در هفته میتونه جلسه بزاره و روزی یک جلسه و نیم

| ID | WBS | Task | Type | Duration | Start | Finish | Predecessors | Complete | Baseline start | Baseline finish | Baseline duration | Constraint | شروع | پایان | مسئول اجرا | Duration10 | Number10 | Number15 | Number18 | Number19 | Number20 |
| --- | --- | --- | --- | --- | --- | --- | --- | --- | --- | --- | --- | --- | --- | --- | --- | --- | --- | --- | --- | --- | --- |
| 27 | 1.9 | **بازخوردمستمر** |  | 55.3d | 2024-06-05 A | 2024-08-27 A |  | 100% | 2024-06-05 | 2024-08-27 | 55.3d |  | 1403/3/16 | 1403/6/6 | مدیر پروژه | 45.6d | 18.67 | 100 | 1867 | 1867 | 100 |
| 28 | 1.9.1 | بررسی میزان ثبت بازخورد آنی در سیستم مدیریت عملکرد |  | 2.4d | 2024-06-05 A | 2024-06-10 A |  | 100% | 2024-06-05 | 2024-06-10 | 2.4d | start no earlier than 2024-06-04 | 1403/3/16 | 1403/3/21 | واحد توسعه | 2.4d | 0.98 | 100 | 98 | 98 | 100 |
| 29 | 1.9.2 | ارسال نظرسنجی به تمام ارزیابی شوندگان جهت دریافت بازخورد مستمر در طول دوره |  | 5.6d | 2024-06-10 A | 2024-06-23 A | 28 | 100% | 2024-06-10 | 2024-06-23 | 5.6d |  | 1403/3/21 | 1403/4/3 | واحد توسعه | 5.6d | 2.29 | 100 | 229 | 229 | 100 |
| 30 | 1.9.3 | ارائه گزارش از نظرسنجی بازخورد مستمر به واحد ها جهت ارائه راهکار |  | 5.6d | 2024-06-23 A | 2024-07-03 A | 29 | 100% | 2024-06-23 | 2024-07-03 | 5.6d |  | 1403/4/3 | 1403/4/13 | واحد توسعه | 5.6d | 2.29 | 100 | 229 | 229 | 100 |
| 31 | 1.9.4 | بررسی و انجام اقدامات عملیاتی درراستای بهبود بازخورد مستمر به تفکیک امور |  | 24d | 2024-07-06 A | 2024-08-17 A | 30 | 100% | 2024-07-06 | 2024-08-17 | 24d |  | 1403/4/16 | 1403/5/27 | واحد توسعه | 24d | 9.83 | 100 | 983 | 983 | 100 |
| 32 | 1.9.5 | بازبینی جهت تعریف دوره های آموزشی برای برخی ارزیابی کنندگان (برگزاری رویداد جهت آموزش به ارزیابی شوندگان) |  | 8d | 2024-08-17 A | 2024-08-27 A | 31 | 100% | 2024-08-17 | 2024-08-27 | 8d |  | 1403/5/27 | 1403/6/6 | واحد توسعه | 8d | 3.28 | 100 | 328 | 328 | 100 |
| 33 | 1.10 | **خودارزیابی** |  | 10.1d | 2024-08-27 A | 2024-09-11 A |  | 100% | 2024-08-27 | 2024-09-11 | 10.1d |  | 1403/6/6 | 1403/6/21 | مدیر پروژه | 6.8d | 2.78 | 100 | 278 | 278 | 100 |
| 34 | 1.10.1 | ارسال ایمیل رسمی به تمامی ارزیابی شوندگان جهت شروع فاز خود ارزیابی |  | 3.2d | 2024-08-27 A | 2024-09-01 A | 32 | 100% | 2024-08-27 | 2024-09-01 | 3.2d |  | 1403/6/6 | 1403/6/11 | واحد توسعه | 3.2d | 1.31 | 100 | 131 | 131 | 100 |
| 35 | 1.10.2 | ارائه محتوای آموزشی به کلیه ارزیابی شوندگان جهت شروع فاز خودارزیابی |  | 3.6d | 2024-09-08 A | 2024-09-11 A | 34 | 100% | 2024-09-08 | 2024-09-11 | 3.6d | finish no earlier than 2024-09-11 | 1403/6/18 | 1403/6/21 | واحد توسعه | 3.6d | 1.47 | 100 | 147 | 147 | 100 |
| 36 | 1.11 | **ارزیابی رسمی** |  | 29.5d | 2024-09-14 A | 2024-10-21 A |  | 100% | 2024-09-14 | 2024-10-21 | 29.5d |  | 1403/6/24 | 1403/7/30 | مدیر پروژه | 16.8d | 6.88 | 52.38 | 360 | 688 | 100 |
| 37 | 1.11.1 | ارسال ایمیل رسمی به تمامی ارزیابی کنندگان جهت برگزاری جلسات رسمی ارزیابی و بازخورد |  | 2.4d | 2024-09-14 A | 2024-09-16 A | 35 | 100% | 2024-09-14 | 2024-09-16 | 2.4d |  | 1403/6/24 | 1403/6/26 | واحد توسعه | 2.4d | 0.98 | 100 | 98 | 98 | 100 |
| 38 | 1.11.2 | ارسال نظرسنجی برگزاری جلسات بازخورد به تمامی ارزیابی شوندگان |  | 2.4d | 2024-09-16 A | 2024-09-18 A | 37 | 100% | 2024-09-16 | 2024-09-18 | 2.4d |  | 1403/6/26 | 1403/6/28 | واحد توسعه | 1ed? | 0.98 | 100 | 98 | 98 | 100 |
| 39 | 1.11.3 | برگزاری جلسات با واحد هایی فاقد جلسات بازخورد |  | 8d | 2024-09-18 A | 2024-09-30 A | 38 | 100% | 2024-09-18 | 2024-09-30 | 8d |  | 1403/6/28 | 1403/7/9 | واحد توسعه | 8d | 3.28 |  |  | 328 | 100 |
| 40 | 1.11.4 | بارائه گزارش کلی و تحلیل واحد براساس خروجی نمرات |  | 4d | 2024-10-16 A | 2024-10-21 A | 39 | 100% | 2024-10-16 | 2024-10-21 | 4d | finish no earlier than 2024-10-21 | 1403/7/25 | 1403/7/30 | واحد توسعه | 4d | 1.64 | 100 | 164 | 164 | 100 |
| 41 | 1.11.5 | اتمام فاز 1 مدیریت عملکرد | milestone | 0d | 2024-10-21 A | 2024-10-21 A | 40, 35 | 100% | 2024-10-21 | 2024-10-21 | 0d |  | 1403/7/30 | 1403/7/30 |  |  |  |  |  |  | 100 |
| 42 | 1.12 | **بازنگری و بهبود فرآیند** |  | 5.6d | 2024-10-16 A | 2024-10-23 A |  | 100% | 2024-10-16 | 2024-10-23 | 5.6d |  | 1403/7/25 | 1403/8/2 | مدیر پروژه | 5.6d | 2.29 | 100 | 229 | 229 | 100 |
| 43 | 1.12.1 | تحیلیل دوره پیشین براساس نتایج به دست امده و بازنگری دوره بعد |  | 5.6d | 2024-10-16 A | 2024-10-23 A | 40SS | 100% | 2024-10-16 | 2024-10-23 | 5.6d |  | 1403/7/25 | 1403/8/2 | واحد توسعه | 5.6d | 2.29 | 100 | 229 | 229 | 100 |
| 44 | 1.13 | **ارائه محتوا سمعی بصری آموزشی** |  | 126.3d | 2024-03-06 A | 2024-09-18 A |  | 100% | 2024-03-06 | 2024-10-16 | 147.3d |  | 1402/12/16 | 1403/6/28 |  | 12d | 4.95 | 100 | 495 | 495 | 100 |
| 45 | 1.13.1 | ارائه محتوا سمعی بصری آموزشی 1 |  | 0.8d | 2024-03-06 A | 2024-03-06 A |  | 100% | 2024-03-06 | 2024-03-06 | 0.8d | start no earlier than 2024-03-06 | 1402/12/16 | 1402/12/16 |  | 0.8d | 0.33 | 100 | 33 | 33 | 100 |
| 46 | 1.13.2 | ارائه محتوا سمعی بصری آموزشی 2 |  | 0.8d | 2024-03-24 A | 2024-03-25 A |  | 100% | 2024-03-24 | 2024-03-25 | 0.8d | start no earlier than 2024-03-20 | 1403/1/5 | 1403/1/6 |  | 0.8d | 0.33 | 100 | 33 | 33 | 100 |
| 47 | 1.13.3 | ارائه محتوا سمعی بصری آموزشی 3 |  | 0.8d | 2024-04-03 A | 2024-04-03 A |  | 100% | 2024-04-03 | 2024-04-03 | 0.8d | start no earlier than 2024-04-03 | 1403/1/15 | 1403/1/15 |  | 0.8d | 0.33 | 100 | 33 | 33 | 100 |
| 48 | 1.13.4 | ارائه محتوا سمعی بصری آموزشی 4 |  | 0.8d | 2024-04-17 A | 2024-04-17 A |  | 100% | 2024-04-17 | 2024-04-17 | 0.8d | start no earlier than 2024-04-17 | 1403/1/29 | 1403/1/29 |  | 0.8d | 0.33 | 100 | 33 | 33 | 100 |
| 49 | 1.13.5 | ارائه محتوا سمعی بصری آموزشی 5 |  | 0.8d | 2024-05-01 A | 2024-05-01 A |  | 100% | 2024-05-01 | 2024-05-01 | 0.8d | start no earlier than 2024-05-01 | 1403/2/12 | 1403/2/12 |  | 0.8d | 0.33 | 100 | 33 | 33 | 100 |
| 50 | 1.13.6 | ارائه محتوا سمعی بصری آموزشی 6 |  | 0.8d | 2024-05-15 A | 2024-05-15 A |  | 100% | 2024-05-15 | 2024-05-15 | 0.8d | start no earlier than 2024-05-15 | 1403/2/26 | 1403/2/26 |  | 0.8d | 0.33 | 100 | 33 | 33 | 100 |
| 51 | 1.13.7 | ارائه محتوا سمعی بصری آموزشی 7 |  | 0.8d | 2024-05-29 A | 2024-05-29 A |  | 100% | 2024-05-29 | 2024-05-29 | 0.8d | start no earlier than 2024-05-29 | 1403/3/9 | 1403/3/9 |  | 0.8d | 0.33 | 100 | 33 | 33 | 100 |
| 52 | 1.13.8 | ارائه محتوا سمعی بصری آموزشی 8 |  | 0.8d | 2024-06-12 A | 2024-06-12 A |  | 100% | 2024-06-12 | 2024-06-12 | 0.8d | start no earlier than 2024-06-12 | 1403/3/23 | 1403/3/23 |  | 0.8d | 0.33 | 100 | 33 | 33 | 100 |
| 53 | 1.13.9 | ارائه محتوا سمعی بصری آموزشی 9 |  | 0.8d | 2024-06-26 A | 2024-06-26 A |  | 100% | 2024-06-26 | 2024-06-26 | 0.8d | start no earlier than 2024-06-26 | 1403/4/6 | 1403/4/6 |  | 0.8d | 0.33 | 100 | 33 | 33 | 100 |
| 54 | 1.13.10 | ارائه محتوا سمعی بصری آموزشی 10 |  | 0.8d | 2024-07-10 A | 2024-07-10 A |  | 100% | 2024-07-10 | 2024-07-10 | 0.8d | start no earlier than 2024-07-10 | 1403/4/20 | 1403/4/20 |  | 0.8d | 0.33 | 100 | 33 | 33 | 100 |
| 55 | 1.13.11 | ارائه محتوا سمعی بصری آموزشی 11 |  | 0.8d | 2024-07-24 A | 2024-07-24 A |  | 100% | 2024-07-24 | 2024-07-24 | 0.8d | start no earlier than 2024-07-24 | 1403/5/3 | 1403/5/3 |  | 0.8d | 0.33 | 100 | 33 | 33 | 100 |
| 56 | 1.13.12 | ارائه محتوا سمعی بصری آموزشی 12 |  | 0.8d | 2024-08-07 A | 2024-08-07 A |  | 100% | 2024-08-07 | 2024-08-07 | 0.8d | start no earlier than 2024-08-07 | 1403/5/17 | 1403/5/17 |  | 0.8d | 0.33 | 100 | 33 | 33 | 100 |
| 57 | 1.13.13 | ارائه محتوا سمعی بصری آموزشی 13 |  | 0.8d | 2024-08-21 A | 2024-08-21 A |  | 100% | 2024-08-21 | 2024-08-21 | 0.8d | start no earlier than 2024-08-21 | 1403/5/31 | 1403/5/31 |  | 0.8d | 0.33 | 100 | 33 | 33 | 100 |
| 58 | 1.13.14 | ارائه محتوا سمعی بصری آموزشی 14 |  | 0.8d | 2024-09-05 A | 2024-09-07 A |  | 100% | 2024-09-05 | 2024-09-07 | 0.8d | start no earlier than 2024-09-04 | 1403/6/15 | 1403/6/17 |  | 0.8d | 0.33 | 100 | 33 | 33 | 100 |
| 59 | 1.13.15 | ارائه محتوا سمعی بصری آموزشی 15 |  | 0.8d | 2024-09-18 A | 2024-09-18 A |  | 100% | 2024-09-18 | 2024-09-18 | 0.8d | start no earlier than 2024-09-18 | 1403/6/28 | 1403/6/28 |  | 0.8d | 0.33 | 100 | 33 | 33 | 100 |
